# 消金渠道接入专项项目

How a schedule from a web Gantt chart changed from version to version. A marks actual dates.

## Version 1 (saved 2024-05-16)

| ID | Task | Duration | Start | Finish | Predecessors |
| --- | --- | --- | --- | --- | --- |
| 2 | 渠道接入专项项目启动会 | 1d | 2024-05-20 | 2024-05-20 |  |
| 3 | 一阶段-需求评审 | 5d | 2024-05-20 | 2024-05-24 |  |
| 4 | 一阶段-需求反讲 | 1d | 2024-05-29 | 2024-05-29 |  |
| 5 | 一阶段-设计评审 | 5d | 2024-05-27 | 2024-05-31 | 3 |
| 6 | 一阶段-研发自测 | 15d | 2024-06-03 | 2024-06-21 | 5 |
| 7 | 一阶段-内外联调 | 5d | 2024-06-17 | 2024-06-21 |  |
| 8 | 一阶段-测试案例撰写&评审 | 5d | 2024-06-17 | 2024-06-21 |  |
| 9 | 一阶段-SIT测试 | 10d | 2024-06-24 | 2024-07-05 | 8 |
| 10 | 一阶段-UAT测试 | 10d | 2024-07-08 | 2024-07-19 | 9 |
| 11 | 一阶段-上线 | 1d | 2024-07-25 | 2024-07-25 |  |
| 12 | 一阶段-项目运维 | 25d | 2024-07-26 | 2024-08-29 | 11 |
| 13 | 二阶段-需求评审 | 5d | 2024-06-03 | 2024-06-07 |  |
| 14 | 二阶段-需求反讲 | 1d | 2024-06-12 | 2024-06-12 |  |
| 15 | 二阶段-设计评审 | 5d | 2024-06-10 | 2024-06-14 | 13 |
| 16 | 二阶段-研发自测 | 15d | 2024-06-17 | 2024-07-05 | 15 |
| 17 | 二阶段-内外联调 | 5d | 2024-07-01 | 2024-07-05 |  |
| 18 | 二阶段-测试案例撰写&评审 | 5d | 2024-07-01 | 2024-07-05 |  |
| 19 | 二阶段-SIT测试 | 10d | 2024-07-08 | 2024-07-19 | 18 |
| 20 | 二阶段-UAT测试 | 10d | 2024-07-22 | 2024-08-02 | 19 |
| 21 | 二阶段-上线 | 1d | 2024-08-08 | 2024-08-08 |  |
| 22 | 二阶段-项目运维 | 25d | 2024-08-09 | 2024-09-12 | 21 |
| 23 | 专项项目上线 | 1d | 2024-08-22 | 2024-08-22 |  |
| 24 | 项目反思总结材料撰写 | 20d | 2024-08-23 | 2024-09-19 | 23 |
| 25 | 项目反思总结会 | 1d | 2024-09-19 | 2024-09-19 |  |

## Version 2 (saved 2024-05-16)

Last finish stays 2024-09-19.

Added:

| ID | Task | Duration | Start | Finish |
| --- | --- | --- | --- | --- |
| 22 | 专项项目-整体上线 | 1d | 2024-08-22 | 2024-08-22 |

Removed: 12 一阶段-项目运维; 23 专项项目上线

Changed:

| ID | Task | Predecessors |
| --- | --- | --- |
| 23 | 项目反思总结材料撰写 | 专项项目上线 → 22 |

## Version 3 (saved 2024-05-16)

Last finish stays 2024-09-19.

Added:

| ID | Task | Duration | Start | Finish | Predecessors |
| --- | --- | --- | --- | --- | --- |
| 12 | 一阶段-项目运维 | 25d | 2024-07-26 | 2024-08-29 | 11 |

## Version 4 (saved 2024-05-16)

Last finish stays 2024-09-19.

Added:

| ID | Task | Duration | Start | Finish |
| --- | --- | --- | --- | --- |
| 22 | 专项项目上线 | 1d | 2024-08-22 | 2024-08-22 |

Removed: 12 一阶段-项目运维; 23 专项项目-整体上线

Changed:

| ID | Task | Predecessors |
| --- | --- | --- |
| 23 | 项目反思总结材料撰写 | 专项项目-整体上线 → 22 |

## Version 5 (saved 2024-05-16)

Last finish stays 2024-09-19.

Added:

| ID | Task | Duration | Start | Finish |
| --- | --- | --- | --- | --- |
| 2 | 项目启动会 | 1d | 2024-05-20 | 2024-05-20 |
| 21 | 项目-整体上线 | 1d | 2024-08-22 | 2024-08-22 |
| 23 | 反思总结会 | 1d | 2024-09-19 | 2024-09-19 |

Removed: 2 渠道接入专项项目启动会; 21 二阶段-项目运维; 22 专项项目上线; 24 项目反思总结会

Changed:

| ID | Task | Predecessors |
| --- | --- | --- |
| 22 | 项目反思总结材料撰写 | 专项项目上线 → 21 |

## Version 6 (saved 2024-05-16)

Last finish stays 2024-09-19.

Added:

| ID | Task | Duration | Start | Finish |
| --- | --- | --- | --- | --- |
| 21 | 专项项目-整体上线 | 1d | 2024-08-22 | 2024-08-22 |
| 23 | 项目反思总结会 | 1d | 2024-09-19 | 2024-09-19 |

Removed: 21 项目-整体上线; 23 反思总结会

Changed:

| ID | Task | Predecessors |
| --- | --- | --- |
| 22 | 项目反思总结材料撰写 | 项目-整体上线 → 21 |

## Version 7 (saved 2024-05-17)

Last finish stays 2024-09-19.

Added:

| ID | Task | Duration | Start | Finish | Predecessors |
| --- | --- | --- | --- | --- | --- |
| 21 | 项目-整体上线 | 1d | 2024-08-22 | 2024-08-22 |  |
| 22 | 反思总结材料撰写 | 20d | 2024-08-23 | 2024-09-19 | 21 |
| 23 | 反思总结会 | 1d | 2024-09-19 | 2024-09-19 |  |

Removed: 21 专项项目-整体上线; 22 项目反思总结材料撰写; 23 项目反思总结会

Changed:

| ID | Task | Start | Finish | Duration |
| --- | --- | --- | --- | --- |
| 16 | 二阶段-内外联调 |  | 2024-07-05 → 2024-07-12 (+7d) | 5d → 10d |
| 17 | 二阶段-测试案例撰写&评审 |  | 2024-07-05 → 2024-07-12 (+7d) | 5d → 10d |
| 18 | 二阶段-SIT测试 | 2024-07-08 → 2024-07-15 (+7d) | 2024-07-19 → 2024-07-26 (+7d) |  |
| 19 | 二阶段-UAT测试 | 2024-07-22 → 2024-07-29 (+7d) | 2024-08-02 → 2024-08-09 (+7d) |  |

## Version 8 (saved 2024-05-17)

Last finish stays 2024-09-19.

Changed:

| ID | Task | Start | Finish | Duration |
| --- | --- | --- | --- | --- |
| 16 | 二阶段-内外联调 |  | 2024-07-12 → 2024-07-05 (-7d) | 10d → 5d |
| 17 | 二阶段-测试案例撰写&评审 |  | 2024-07-12 → 2024-07-05 (-7d) | 10d → 5d |
| 18 | 二阶段-SIT测试 | 2024-07-15 → 2024-07-08 (-7d) | 2024-07-26 → 2024-07-19 (-7d) |  |
| 19 | 二阶段-UAT测试 | 2024-07-29 → 2024-07-22 (-7d) | 2024-08-09 → 2024-08-02 (-7d) |  |

## Version 9 (saved 2024-05-20)

Last finish stays 2024-09-19.

Changed:

| ID | Task | Finish | Duration |
| --- | --- | --- | --- |
| 6 | 一阶段-研发自测 | 2024-06-21 → 2024-06-14 (-7d) | 15d → 10d |
| 15 | 二阶段-研发自测 | 2024-07-05 → 2024-06-28 (-7d) | 15d → 10d |
